# V2_WBS_COCINA

How a schedule from MS Project changed from version to version. A marks actual dates.

## Version 1 (saved 2020-06-10)

Note of the change: Cronograma del proyecto

| ID | WBS | Task | Duration | Start | Finish | Predecessors | Total float | Constraint |
| --- | --- | --- | --- | --- | --- | --- | --- | --- |
| 1 | 1 | **APP PARA EL SEGUIMIENTO DE MERCADOS MOVIL** | 61d? | 2020-05-12 | 2020-08-04 |  | 0d |  |
| 2 | 1.1 | **FASE INICIO** | 27d? | 2020-05-12 | 2020-06-17 |  | 0d |  |
| 3 | 1.1.1 | **Iniciacion** | 2d | 2020-05-12 | 2020-05-13 |  | 0d |  |
| 4 |  | Idea de Proyecto | 2d | 2020-05-12 | 2020-05-13 |  | 0d | start no earlier than 2020-05-12 |
| 5 | 1.1.2 | **Planificacion** | 2d | 2020-05-14 | 2020-05-15 | 3 | 0d |  |
| 6 |  | EDT WBS | 2d | 2020-05-14 | 2020-05-15 |  | 0d |  |
| 7 | 1.1.2.2 | **Normatividad** | 2d | 2020-05-14 | 2020-05-15 |  | 0d |  |
| 8 |  | Estandares de Programacion | 2d | 2020-05-14 | 2020-05-15 |  | 0d |  |
| 9 | 1.1.3 | **Ejecucion** | 21d? | 2020-05-18 | 2020-06-15 | 5 | 0d |  |
| 10 |  | Requerimientos | 10d | 2020-05-18 | 2020-05-29 |  | 0d |  |
| 11 |  | Prototipos | 2d | 2020-06-01 | 2020-06-02 | 10 | 0d |  |
| 12 | 1.1.3.3 | **Arquitectura** | 19d? | 2020-05-18 | 2020-06-11 |  | 2d |  |
| 13 |  | Diagrama de Procesos | 1d? | 2020-05-18 | 2020-05-18 |  | 20d |  |
| 14 |  | Vista de casos de uso | 4d | 2020-06-03 | 2020-06-08 | 11 | 0d |  |
| 15 |  | Diagrama de actividades | 2d | 2020-06-09 | 2020-06-10 | 14 | 0d |  |
| 16 |  | Vista de despliegue | 1d | 2020-06-11 | 2020-06-11 | 15 | 0d |  |
| 17 | 1.1.3.4 | **Gestion** | 21d | 2020-05-18 | 2020-06-15 |  | 0d |  |
| 18 |  | Matriz de riesgos | 2d | 2020-05-18 | 2020-05-19 |  | 19d |  |
| 19 |  | Matriz de trazabilidad | 2d | 2020-06-12 | 2020-06-15 | 16 | 0d |  |
| 20 | 1.1.4 | **Calidad** | 2d | 2020-06-16 | 2020-06-17 | 9 | 0d |  |
| 21 |  | Checklist de Requerimientos | 2d | 2020-06-16 | 2020-06-17 |  | 0d |  |
| 22 |  | Checklist de Analisis | 2d | 2020-06-16 | 2020-06-17 |  | 0d |  |
| 23 |  | Checklist de Diseño | 2d | 2020-06-16 | 2020-06-17 |  | 0d |  |
| 24 | 1.1.5 | **Conformidades** | 1d | 2020-05-18 | 2020-05-19 |  | 21.5d |  |
| 25 |  | Actas | 1d | 2020-05-18 | 2020-05-19 |  | 21.5d |  |
| 26 | 1.2 | **FASE ELABORACION** | 11d? | 2020-06-18 | 2020-07-02 | 2 | 0d |  |
| 27 | 1.2.1 | **Plan de Iteracion 01** | 3d | 2020-06-18 | 2020-06-22 |  | 0d |  |
| 28 |  | Elaboracion de Plan de Iteracion 01 | 3d | 2020-06-18 | 2020-06-22 | 2 | 0d |  |
| 29 | 1.2.1.2 | **Analisis y Diseño** | 2d | 2020-06-18 | 2020-06-19 |  | 1d |  |
| 30 |  | Diagrama de Casos de Uso | 1d | 2020-06-18 | 2020-06-18 |  | 2d |  |
| 31 |  | Diagrama de Actividades | 1d | 2020-06-18 | 2020-06-18 |  | 2d |  |
| 32 |  | Elaboracion del MER | 1d | 2020-06-18 | 2020-06-18 |  | 2d |  |
| 33 |  | Elaboracion de la Base de datos | 1d | 2020-06-18 | 2020-06-18 |  | 2d |  |
| 34 |  | Prototipos del sistema | 2d | 2020-06-18 | 2020-06-19 |  | 1d |  |
| 35 | 1.2.1.3 | **Implementacion** | 3d | 2020-06-18 | 2020-06-22 |  | 0d |  |
| 36 | 1.2.1.3.1 | **Desarrollo de requerimientos Altos** | 3d | 2020-06-18 | 2020-06-22 |  | 0d |  |
| 37 |  | Modulo Gestionar Recetas | 3d | 2020-06-18 | 2020-06-22 |  | 0d |  |
| 38 | 1.2.1.4 | **Pruebas** | 2d | 2020-06-18 | 2020-06-19 |  | 1d |  |
| 39 |  | Documento de Pruebas Unitarias | 2d | 2020-06-18 | 2020-06-19 |  | 1d |  |
| 40 | 1.2.2 | **Plan de Iteracion 02** | 8d? | 2020-06-23 | 2020-07-02 | 27 | 0d |  |
| 41 |  | Elaboracion de Plan de Iteracion 02 | 8d | 2020-06-23 | 2020-07-02 |  | 0d |  |
| 42 | 1.2.2.2 | **Diseño del sistema** | 3d | 2020-06-23 | 2020-06-25 |  | 5d |  |
| 43 |  | Revision de la arquitectura del sistema | 1d | 2020-06-23 | 2020-06-23 |  | 7d |  |
| 44 |  | Elaboracion del MER | 1d | 2020-06-23 | 2020-06-23 |  | 7d |  |
| 45 |  | Elaboracion de la Base de datos | 1d | 2020-06-23 | 2020-06-23 |  | 7d |  |
| 46 |  | Prototipos del sistema | 3d | 2020-06-23 | 2020-06-25 |  | 5d |  |
| 47 | 1.2.2.3 | **Implementacion** | 3d? | 2020-06-23 | 2020-06-25 |  | 5d |  |
| 48 | 1.2.2.3.1 | **Desarrollo de requerimientos Altos** | 3d? | 2020-06-23 | 2020-06-25 |  | 5d |  |
| 49 |  | Modulo ABC | 3d | 2020-06-23 | 2020-06-25 |  | 5d |  |
| 50 |  | Modulo ABC | 1d? | 2020-06-23 | 2020-06-23 |  | 7d |  |
| 51 |  | Modulo ABC | 1d? | 2020-06-23 | 2020-06-23 |  | 7d |  |
| 52 | 1.2.2.4 | **Pruebas** | 1d | 2020-06-23 | 2020-06-23 |  | 7d |  |
| 53 |  | Revision de Matriz de Trazabilidad | 1d | 2020-06-23 | 2020-06-23 |  | 7d |  |
| 54 |  | Revision de Gestion de Riesgos | 1d | 2020-06-23 | 2020-06-23 |  | 7d |  |
| 55 | 1.3 | **FASE CONSTRUCCION** | 18d | 2020-07-03 | 2020-07-28 | 26 | 0d |  |
| 56 | 1.3.1 | **Iteracion 01** | 12d | 2020-07-03 | 2020-07-20 |  | 0d |  |
| 57 |  | Elaboracion del plan de iteracion 01 | 12d | 2020-07-03 | 2020-07-20 |  | 0d |  |
| 58 | 1.3.2 | **Iteracion 02** | 6d | 2020-07-21 | 2020-07-28 | 57 | 0d |  |
| 59 |  | Elaboracion del plan de iteracion 02 | 6d | 2020-07-21 | 2020-07-28 |  | 0d |  |
| 60 | 1.4 | **FASE CIERRE** | 5d | 2020-07-29 | 2020-08-04 | 55 | 0d |  |
| 61 |  | ejecucion de pruebas | 2d | 2020-07-29 | 2020-07-30 |  | 3d |  |
| 62 |  | manual de usuario | 5d | 2020-07-29 | 2020-08-04 |  | 0d |  |

## Version 2 (saved 2020-06-10)

Note of the change: Atualizacion de Cronograma y Iteraciones

Last finish 2020-08-04 → 2020-08-20 (+16d).

Added:

| ID | Task | Duration | Start | Finish | Predecessors | Resources |
| --- | --- | --- | --- | --- | --- | --- |
| 17 | Diagrama de clases | 2d | 2020-06-10 | 2020-06-11 | 16 | Angela Balaguer; Leydi Huallpa; Orestes Ramirez |

Changed:

| ID | Task | Start | Finish | Duration | Total float | Predecessors | Other |
| --- | --- | --- | --- | --- | --- | --- | --- |
| 1 | **APP PARA EL SEGUIMIENTO DE MERCADOS MOVIL** |  | 2020-08-04 → 2020-08-20 (+16d) | 61d? → 73d? |  |  |  |
| 2 | **FASE INICIO** |  | 2020-06-17 → 2020-06-15 (-2d) | 27d? → 25d |  |  |  |
| 5 | **Planificacion** |  | 2020-05-15 → 2020-05-18 (+3d) | 2d → 3d |  |  |  |
| 6 | EDT WBS |  | 2020-05-15 → 2020-05-14 (-1d) | 2d → 1d | 0d → 2d |  |  |
| 7 | **Normatividad** | 2020-05-14 → 2020-05-15 (+1d) | 2020-05-15 → 2020-05-18 (+3d) |  |  |  |  |
| 8 | Estandares de Programacion | 2020-05-14 → 2020-05-15 (+1d) | 2020-05-15 → 2020-05-18 (+3d) |  |  |  | constraint none → start no earlier than 2020-05-15; resources Leydi Huallpa → Angela Balaguer |
| 9 | **Ejecucion** | 2020-05-18 → 2020-05-19 (+1d) | 2020-06-15 → 2020-06-11 (-4d) | 21d? → 18d |  |  |  |
| 10 | Requerimientos | 2020-05-18 → 2020-05-19 (+1d) | 2020-05-29 → 2020-05-28 (-1d) | 10d → 8d |  |  |  |
| 11 | Prototipos | 2020-06-01 → 2020-05-29 (-3d) | 2020-06-02 → 2020-06-03 (+1d) | 2d → 4d |  |  |  |
| 12 | **Arquitectura** | 2020-05-18 → 2020-05-19 (+1d) |  | 19d? → 18d | 2d → 0d |  |  |
| 13 | Diagrama de Procesos | 2020-05-18 → 2020-05-19 (+1d) | 2020-05-18 → 2020-05-20 (+2d) | 1d? → 2d | 20d → 16d |  | resources Leydi Huallpa → Orestes Ramirez |
| 14 | Vista de casos de uso | 2020-06-03 → 2020-06-04 (+1d) | 2020-06-08 → 2020-06-05 (-3d) | 4d → 2d |  |  |  |
| 15 | Diagrama de actividades | 2020-06-09 → 2020-06-08 (-1d) | 2020-06-10 → 2020-06-08 (-2d) | 2d → 1d |  |  |  |
| 16 | Vista de despliegue | 2020-06-11 → 2020-06-09 (-2d) | 2020-06-11 → 2020-06-09 (-2d) |  |  |  |  |
| 18 | **Gestion** | 2020-05-18 → 2020-06-09 (+22d) | 2020-06-15 → 2020-06-11 (-4d) | 21d → 3d |  |  |  |
| 19 | Matriz de riesgos | 2020-05-18 → 2020-06-09 (+22d) | 2020-05-19 → 2020-06-10 (+22d) |  | 19d → 1d |  | constraint none → start no earlier than 2020-06-09 |
| 20 | Matriz de trazabilidad | 2020-06-12 → 2020-06-10 (-2d) | 2020-06-15 → 2020-06-11 (-4d) |  |  |  |  |
| 21 | **Calidad** | 2020-06-16 → 2020-06-12 (-4d) | 2020-06-17 → 2020-06-15 (-2d) |  |  |  |  |
| 22 | Checklist de Requerimientos | 2020-06-16 → 2020-06-12 (-4d) | 2020-06-17 → 2020-06-15 (-2d) |  |  |  | resources Angela Balaguer → Leydi Huallpa |
| 23 | Checklist de Analisis | 2020-06-16 → 2020-06-12 (-4d) | 2020-06-17 → 2020-06-15 (-2d) |  |  |  | resources Leydi Huallpa → Angela Balaguer |
| 24 | Checklist de Diseño | 2020-06-16 → 2020-06-12 (-4d) | 2020-06-17 → 2020-06-15 (-2d) |  |  |  |  |
| 27 | **FASE ELABORACION** | 2020-06-18 → 2020-06-16 (-2d) | 2020-07-02 → 2020-07-13 (+11d) | 11d? → 20d? |  |  |  |
| 28 | **Plan de Iteracion 01** | 2020-06-18 → 2020-06-16 (-2d) | 2020-06-22 → 2020-07-01 (+9d) | 3d → 12d |  |  |  |
| 29 | Elaboracion de Plan de Iteracion 01 | 2020-06-18 → 2020-06-16 (-2d) | 2020-06-22 → 2020-06-16 (-6d) | 3d → 1d |  |  | constraint none → start no earlier than 2020-06-16 |
| 30 | **Analisis y Diseño** | 2020-06-18 → 2020-06-17 (-1d) | 2020-06-19 → 2020-06-26 (+7d) | 2d → 8d | 1d → 0d |  |  |
| 31 | Diagrama de Casos de Uso | 2020-06-18 → 2020-06-17 (-1d) | 2020-06-18 → 2020-06-17 (-1d) |  | 2d → 0d | none → 29 |  |
| 32 | Diagrama de Actividades |  | 2020-06-18 → 2020-06-19 (+1d) | 1d → 2d | 2d → 0d | none → 31 |  |
| 33 | Elaboracion del MER | 2020-06-18 → 2020-06-22 (+4d) | 2020-06-18 → 2020-06-22 (+4d) |  | 2d → 0d | none → 32 |  |
| 34 | Elaboracion de la Base de datos | 2020-06-18 → 2020-06-23 (+5d) | 2020-06-18 → 2020-06-24 (+6d) | 1d → 2d | 2d → 0d | none → 33 |  |
| 35 | Prototipos del sistema | 2020-06-18 → 2020-06-25 (+7d) | 2020-06-19 → 2020-06-26 (+7d) |  | 1d → 0d | none → 34 |  |
| 36 | **Implementacion** | 2020-06-18 → 2020-06-29 (+11d) | 2020-06-22 → 2020-06-30 (+8d) | 3d → 2d |  |  |  |
| 37 | **Desarrollo de requerimientos Altos** | 2020-06-18 → 2020-06-29 (+11d) | 2020-06-22 → 2020-06-30 (+8d) | 3d → 2d |  |  |  |
| 38 | Modulo Gestionar Recetas | 2020-06-18 → 2020-06-29 (+11d) | 2020-06-22 → 2020-06-30 (+8d) | 3d → 2d |  | none → 35 |  |
| 39 | **Pruebas** | 2020-06-18 → 2020-07-01 (+13d) | 2020-06-19 → 2020-07-01 (+12d) | 2d → 1d | 1d → 0d |  |  |
| 40 | Documento de Pruebas Unitarias | 2020-06-18 → 2020-07-01 (+13d) | 2020-06-19 → 2020-07-01 (+12d) | 2d → 1d | 1d → 0d | none → 38 |  |
| 41 | **Plan de Iteracion 02** | 2020-06-23 → 2020-07-02 (+9d) | 2020-07-02 → 2020-07-13 (+11d) |  |  |  |  |
| 42 | Elaboracion de Plan de Iteracion 02 | 2020-06-23 → 2020-07-02 (+9d) |  | 8d → 1d |  | none → 40 |  |
| 43 | **Diseño del sistema** | 2020-06-23 → 2020-07-03 (+10d) | 2020-06-25 → 2020-07-09 (+14d) | 3d → 5d | 5d → 0d |  |  |
| 44 | Revision de la arquitectura del sistema | 2020-06-23 → 2020-07-03 (+10d) | 2020-06-23 → 2020-07-03 (+10d) |  | 7d → 0d | none → 42 |  |
| 45 | Elaboracion del MER | 2020-06-23 → 2020-07-06 (+13d) | 2020-06-23 → 2020-07-06 (+13d) |  | 7d → 0d | none → 44 |  |
| 46 | Elaboracion de la Base de datos | 2020-06-23 → 2020-07-07 (+14d) | 2020-06-23 → 2020-07-07 (+14d) |  | 7d → 0d | none → 45 |  |
| 47 | Prototipos del sistema | 2020-06-23 → 2020-07-08 (+15d) | 2020-06-25 → 2020-07-09 (+14d) | 3d → 2d | 5d → 0d | none → 46 |  |
| 48 | **Implementacion** | 2020-06-23 → 2020-07-02 (+9d) | 2020-06-25 → 2020-07-13 (+18d) | 3d? → 8d? | 5d → 0d |  |  |
| 49 | **Desarrollo de requerimientos Altos** | 2020-06-23 → 2020-07-02 (+9d) | 2020-06-25 → 2020-07-13 (+18d) | 3d? → 8d? | 5d → 0d |  |  |
| 50 | Modulo ABC | 2020-06-23 → 2020-07-10 (+17d) | 2020-06-25 → 2020-07-10 (+15d) | 3d → 1d | 5d → 0d | none → 47 |  |
| 51 | Modulo ABC | 2020-06-23 → 2020-07-13 (+20d) | 2020-06-23 → 2020-07-13 (+20d) |  | 7d → 0d | none → 50 |  |
| 52 | Modulo ABC | 2020-06-23 → 2020-07-02 (+9d) | 2020-06-23 → 2020-07-02 (+9d) |  |  |  |  |
| 53 | **Pruebas** | 2020-06-23 → 2020-07-02 (+9d) | 2020-06-23 → 2020-07-02 (+9d) |  |  |  |  |
| 54 | Revision de Matriz de Trazabilidad | 2020-06-23 → 2020-07-02 (+9d) | 2020-06-23 → 2020-07-02 (+9d) |  |  |  |  |
| 55 | Revision de Gestion de Riesgos | 2020-06-23 → 2020-07-02 (+9d) | 2020-06-23 → 2020-07-02 (+9d) |  |  |  |  |
| 56 | **FASE CONSTRUCCION** | 2020-07-03 → 2020-07-14 (+11d) | 2020-07-28 → 2020-08-17 (+20d) | 18d → 25d |  |  |  |
| 57 | **Iteracion 01** | 2020-07-03 → 2020-07-14 (+11d) | 2020-07-20 → 2020-07-30 (+10d) | 12d → 13d |  |  |  |
| 58 | Elaboracion del plan de iteracion 01 | 2020-07-03 → 2020-07-14 (+11d) | 2020-07-20 → 2020-07-30 (+10d) | 12d → 13d |  |  | constraint none → start no earlier than 2020-07-14 |
| 59 | **Iteracion 02** | 2020-07-21 → 2020-07-31 (+10d) | 2020-07-28 → 2020-08-17 (+20d) | 6d → 12d |  |  |  |
| 60 | Elaboracion del plan de iteracion 02 | 2020-07-21 → 2020-07-31 (+10d) | 2020-07-28 → 2020-08-17 (+20d) | 6d → 12d |  |  |  |
| 61 | **FASE CIERRE** | 2020-07-29 → 2020-08-18 (+20d) | 2020-08-04 → 2020-08-20 (+16d) | 5d → 3d |  |  |  |
| 62 | ejecucion de pruebas | 2020-07-29 → 2020-08-18 (+20d) | 2020-07-30 → 2020-08-19 (+20d) |  | 3d → 1d |  |  |
| 63 | manual de usuario | 2020-07-29 → 2020-08-18 (+20d) | 2020-08-04 → 2020-08-20 (+16d) | 5d → 3d |  |  |  |

## Version 3 (saved 2020-06-11)

Note of the change: Actualizaciond e Cronograma y Plan de Iteracion

Last finish stays 2020-08-20.

Added:

| ID | Task | Duration | Start | Finish | Predecessors | Resources |
| --- | --- | --- | --- | --- | --- | --- |
| 59 | pruebas de aceptacion | 2d | 2020-08-17 | 2020-08-18 | 57 | Angela Balaguer; Leydi Huallpa; Orestes Ramirez |

Removed: 15 Diagrama de actividades; 51 Modulo ABC; 52 Modulo ABC; 62 ejecucion de pruebas

Changed:

| ID | Task | Start | Finish | Duration | Total float | Predecessors | Other |
| --- | --- | --- | --- | --- | --- | --- | --- |
| 1 | **APP PARA EL SEGUIMIENTO DE MERCADOS MOVIL** |  |  | 73d? → 73d |  |  |  |
| 4 | Idea de Proyecto |  |  |  | 1d → 0d |  | resources Orestes Ramirez → Orestes Ramirez; Angela Balaguer; Leydi Huallpa |
| 6 | EDT WBS |  |  |  | 2d → 0d | none → 4 |  |
| 8 | Estandares de Programacion |  |  |  |  | none → 6 |  |
| 9 | **Ejecucion** |  | 2020-06-11 → 2020-06-09 (-2d) | 18d → 16d |  |  |  |
| 10 | Requerimientos |  | 2020-05-28 → 2020-05-26 (-2d) | 8d → 6d |  | none → 8 |  |
| 11 | Prototipos | 2020-05-29 → 2020-05-27 (-2d) | 2020-06-03 → 2020-06-01 (-2d) |  |  |  |  |
| 12 | **Arquitectura** | 2020-05-19 → 2020-06-02 (+14d) | 2020-06-11 → 2020-06-08 (-3d) | 18d → 5d |  |  |  |
| 13 | Diagrama de Procesos | 2020-05-19 → 2020-06-02 (+14d) | 2020-05-20 → 2020-06-03 (+14d) |  | 16d → 4d | none → 11 | resources Orestes Ramirez → Orestes Ramirez; Angela Balaguer; Leydi Huallpa |
| 14 | Vista de casos de uso | 2020-06-04 → 2020-06-02 (-2d) | 2020-06-05 → 2020-06-03 (-2d) |  |  |  |  |
| 15 | Vista de despliegue | 2020-06-09 → 2020-06-04 (-5d) | 2020-06-09 → 2020-06-04 (-5d) |  |  | Diagrama de actividades → 14 |  |
| 16 | Diagrama de clases | 2020-06-10 → 2020-06-05 (-5d) | 2020-06-11 → 2020-06-08 (-3d) |  |  |  |  |
| 17 | **Gestion** | 2020-06-09 → 2020-06-05 (-4d) | 2020-06-11 → 2020-06-09 (-2d) |  |  |  |  |
| 18 | Matriz de riesgos |  | 2020-06-10 → 2020-06-09 (-1d) | 2d → 1d | 1d → 0d | none → 16 |  |
| 19 | Matriz de trazabilidad | 2020-06-10 → 2020-06-05 (-5d) | 2020-06-11 → 2020-06-08 (-3d) |  | 0d → 1d |  |  |
| 20 | **Calidad** | 2020-06-12 → 2020-06-10 (-2d) | 2020-06-15 → 2020-06-12 (-3d) | 2d → 3d |  |  |  |
| 21 | Checklist de Requerimientos | 2020-06-12 → 2020-06-10 (-2d) | 2020-06-15 → 2020-06-10 (-5d) | 2d → 1d |  | none → 19 |  |
| 22 | Checklist de Analisis | 2020-06-12 → 2020-06-11 (-1d) | 2020-06-15 → 2020-06-11 (-4d) | 2d → 1d |  | none → 21 |  |
| 23 | Checklist de Diseño |  | 2020-06-15 → 2020-06-12 (-3d) | 2d → 1d |  | none → 22 |  |
| 24 | **Conformidades** | 2020-05-18 → 2020-06-15 (+28d) | 2020-05-19 → 2020-06-15 (+27d) |  | 19.5d → 0d |  |  |
| 25 | Actas | 2020-05-18 → 2020-06-15 (+28d) | 2020-05-19 → 2020-06-15 (+27d) |  | 19.5d → 0d | none → 23 |  |
| 26 | **FASE ELABORACION** |  |  | 20d? → 20d |  |  |  |
| 27 | **Plan de Iteracion 01** |  | 2020-07-01 → 2020-06-30 (-1d) | 12d → 11d |  |  |  |
| 29 | **Analisis y Diseño** |  | 2020-06-26 → 2020-06-25 (-1d) | 8d → 7d |  |  |  |
| 31 | Diagrama de Secuencia |  |  |  |  |  | was named Diagrama de Actividades |
| 33 | Elaboracion de la Base de datos |  | 2020-06-24 → 2020-06-23 (-1d) | 2d → 1d |  |  |  |
| 34 | Prototipos del sistema | 2020-06-25 → 2020-06-24 (-1d) | 2020-06-26 → 2020-06-25 (-1d) |  |  |  |  |
| 35 | **Implementacion** | 2020-06-29 → 2020-06-26 (-3d) | 2020-06-30 → 2020-06-29 (-1d) |  |  |  |  |
| 36 | **Desarrollo de requerimientos Altos** | 2020-06-29 → 2020-06-26 (-3d) | 2020-06-30 → 2020-06-29 (-1d) |  |  |  |  |
| 37 | Modulo Gestionar Unidades | 2020-06-29 → 2020-06-26 (-3d) | 2020-06-30 → 2020-06-29 (-1d) |  |  |  | was named Modulo Gestionar Recetas |
| 38 | **Pruebas** | 2020-07-01 → 2020-06-30 (-1d) | 2020-07-01 → 2020-06-30 (-1d) |  |  |  |  |
| 39 | Documento de Pruebas | 2020-07-01 → 2020-06-30 (-1d) | 2020-07-01 → 2020-06-30 (-1d) |  |  |  | was named Documento de Pruebas Unitarias |
| 40 | **Plan de Iteracion 02** | 2020-07-02 → 2020-07-01 (-1d) |  | 8d? → 9d |  |  |  |
| 41 | Elaboracion de Plan de Iteracion 02 | 2020-07-02 → 2020-07-01 (-1d) | 2020-07-02 → 2020-07-01 (-1d) |  |  |  |  |
| 42 | **Diseño del sistema** | 2020-07-03 → 2020-07-02 (-1d) | 2020-07-09 → 2020-07-08 (-1d) |  |  |  |  |
| 43 | Revision de la arquitectura del sistema | 2020-07-03 → 2020-07-02 (-1d) | 2020-07-03 → 2020-07-02 (-1d) |  |  |  |  |
| 44 | Elaboracion del MER | 2020-07-06 → 2020-07-03 (-3d) | 2020-07-06 → 2020-07-03 (-3d) |  |  |  |  |
| 45 | Elaboracion de la Base de datos | 2020-07-07 → 2020-07-06 (-1d) | 2020-07-07 → 2020-07-06 (-1d) |  |  |  |  |
| 46 | Prototipos del sistema | 2020-07-08 → 2020-07-07 (-1d) | 2020-07-09 → 2020-07-08 (-1d) |  |  |  |  |
| 47 | **Implementacion** | 2020-07-02 → 2020-07-09 (+7d) | 2020-07-13 → 2020-07-09 (-4d) | 8d? → 1d |  |  |  |
| 48 | **Desarrollo de requerimientos Altos** | 2020-07-02 → 2020-07-09 (+7d) | 2020-07-13 → 2020-07-09 (-4d) | 8d? → 1d |  |  |  |
| 49 | Gestionar Personal | 2020-07-10 → 2020-07-09 (-1d) | 2020-07-10 → 2020-07-09 (-1d) |  |  |  | was named Modulo ABC |
| 50 | **Pruebas** | 2020-07-02 → 2020-07-10 (+8d) | 2020-07-02 → 2020-07-13 (+11d) | 1d → 2d | 7d → 0d |  |  |
| 51 | Revision de Matriz de Trazabilidad | 2020-07-02 → 2020-07-10 (+8d) | 2020-07-02 → 2020-07-10 (+8d) |  | 7d → 0d | none → 49 |  |
| 52 | Revision de Gestion de Riesgos | 2020-07-02 → 2020-07-13 (+11d) | 2020-07-02 → 2020-07-13 (+11d) |  | 7d → 0d | none → 51 |  |
| 53 | **FASE CONSTRUCCION** |  | 2020-08-17 → 2020-08-14 (-3d) | 25d → 24d |  |  |  |
| 54 | **Iteracion 01** |  | 2020-07-30 → 2020-07-29 (-1d) | 13d → 12d |  |  |  |
| 55 | Elaboracion del plan de iteracion 01 |  | 2020-07-30 → 2020-07-29 (-1d) | 13d → 12d |  | none → 52 |  |
| 56 | **Iteracion 02** | 2020-07-31 → 2020-07-30 (-1d) | 2020-08-17 → 2020-08-14 (-3d) |  |  |  |  |
| 57 | Elaboracion del plan de iteracion 02 | 2020-07-31 → 2020-07-30 (-1d) | 2020-08-17 → 2020-08-14 (-3d) |  |  | none → 55 |  |
| 58 | **FASE CIERRE** | 2020-08-18 → 2020-08-17 (-1d) |  | 3d → 4d |  |  |  |
| 60 | manual de usuario | 2020-08-18 → 2020-08-19 (+1d) |  | 3d → 2d |  | none → 59 |  |
